# Marketing Seminar Plan

Schedule from MS Project, 2003-12-03 to 2004-02-09.

## Calendars

- Standard: Mon-Fri 08:00-12:00, 13:00-17:00; Sat-Sun off.

## Resources

| Resource |
| --- |
| Program Manager |
| Sponsor |
| Subject Matter Expert |
| Logistics |
| Telemarketing |
| Copy |
| Graphic Designer |
| Branch Manager |
| Sales Team |
| Project Manager |
| Logistics Manager |
| Subject Matter Expert |
| Telemarketing |
| Branch Manager |
| Copywriter |
| Graphic Designer |
| Sales Team |
| Sales Team |
| Event Sponsor |

## Schedule

| ID | WBS | Task | Type | Duration | Start | Finish | Predecessors | Total slack | Free slack | Resources | Work |
| --- | --- | --- | --- | --- | --- | --- | --- | --- | --- | --- | --- |
| 1 | 1 | **Marketing Seminar Plan** |  | 48.62d? | 2003-12-03 08:00 | 2004-02-09 14:00 |  | 0d |  |  | 1519h |
| 2 | 1.1 | Review seminar start date | milestone | 0d | 2003-12-03 08:00 | 2003-12-03 08:00 |  | 34.62d | 28.5d |  |  |
| 3 | 1.2 | Decide to do seminar | milestone | 0d | 2003-12-03 08:00 | 2003-12-03 08:00 |  | 0d |  |  |  |
| 4 | 1.3 | **Logistics** |  | 31d | 2003-12-03 08:00 | 2004-01-14 17:00 |  | 17.62d |  |  | 112h |
| 5 | 1.3.1 | Complete and send in application to sponsor |  | 1h | 2003-12-03 08:00 | 2003-12-03 09:00 | 3 | 42.25d | 0d | Project Manager | 1h |
| 6 | 1.3.2 | Receive event specification list |  | 1w | 2003-12-03 09:00 | 2003-12-10 09:00 | 5 | 42.25d | 0d | Event Sponsor | 40h |
| 7 | 1.3.3 | Reserve rooms |  | 1h | 2003-12-10 09:00 | 2003-12-10 10:00 | 6 | 42.25d | 13.25d | Project Manager | 1h |
| 8 | 1.3.4 | Obtain proper signage for booth |  | 1h | 2003-12-22 13:00 | 2003-12-22 14:00 | 6, 31 | 35d |  | Logistics Manager | 1h |
| 9 | 1.3.5 | Obtain registration list from sponsor |  | 1d | 2004-01-13 13:00 | 2004-01-14 12:00 | 56FS-2d | 17.62d | 0d | Project Manager | 8h |
| 10 | 1.3.6 | Notify sales team of relevant registered customers |  | 0.5d | 2004-01-14 13:00 | 2004-01-14 17:00 | 9 | 17.62d |  | Logistics Manager | 4h |
| 11 | 1.3.7 | Post event to sponsor Web site |  | 1d | 2003-12-29 13:00 | 2003-12-30 12:00 | 7, 32 | 29d | 0d | Logistics Manager | 8h |
| 12 | 1.3.8 | Check sponsor Web site for posting accuracy |  | 1h | 2003-12-30 13:00 | 2003-12-30 14:00 | 11 | 29d |  | Logistics Manager | 1h |
| 13 | 1.3.9 | Order food and beverages |  | 2h | 2004-01-14 13:00 | 2004-01-14 15:00 | 7, 9 | 17.88d |  | Logistics Manager | 2h |
| 14 | 1.3.10 | Install demos on laptops |  | 2d | 2004-01-12 13:00 | 2004-01-14 12:00 | 37 | 18.12d |  | Subject Matter Expert | 16h |
| 15 | 1.3.11 | Set up lead retrieval mechanism and management |  | 1h | 2003-12-22 13:00 | 2003-12-22 14:00 | 31 | 31.75d | 4.88d | Project Manager | 1h |
| 16 | 1.3.12 | Schedule logistics meeting with all participants |  | 1h | 2003-12-29 13:00 | 2003-12-29 14:00 | 32, 15 | 26.88d | 0d | Logistics Manager | 1h |
| 17 | 1.3.13 | **Logistics Meeting with All Participants** |  | 0.12d | 2004-01-01 14:00 | 2004-01-01 15:00 |  | 26.88d |  |  | 20h |
| 18 | 1.3.13.1 | Schedule setup and rehearsal |  | 1h | 2004-01-01 14:00 | 2004-01-01 15:00 | 16FS+3d | 26.88d |  | Branch Manager; Logistics Manager; Sales Team; Telemarketing; Project Manager | 5h |
| 19 | 1.3.13.2 | Distribute directions to event |  | 1h | 2004-01-01 14:00 | 2004-01-01 15:00 | 16FS+3d | 26.88d |  | Branch Manager; Sales Team; Logistics Manager; Telemarketing; Project Manager | 5h |
| 20 | 1.3.13.3 | Distribute badges |  | 1h | 2004-01-01 14:00 | 2004-01-01 15:00 | 16FS+3d | 26.88d |  | Branch Manager; Sales Team; Logistics Manager; Telemarketing; Project Manager | 5h |
| 21 | 1.3.13.4 | Convey purpose, message, and lead retrieval |  | 1h | 2004-01-01 14:00 | 2004-01-01 15:00 | 16FS+3d | 26.88d |  | Branch Manager; Sales Team; Logistics Manager; Telemarketing; Project Manager | 5h |
| 22 | 1.3.14 | Assemble materials for booth and handouts |  | 1d | 2004-01-13 13:00 | 2004-01-14 12:00 | 23 | 18.12d |  | Logistics Manager | 8h |
| 23 | 1.4 | **Print** |  | 1d | 2004-01-12 13:00 | 2004-01-13 12:00 |  | 18.12d | 0d |  | 16h |
| 24 | 1.4.1 | All applicable collateral |  | 1d | 2004-01-12 13:00 | 2004-01-13 12:00 | 32, 36, 37, 33, 29 | 18.12d |  | Logistics Manager | 8h |
| 25 | 1.4.2 | Call to action |  | 1d | 2004-01-12 13:00 | 2004-01-13 12:00 | 32, 36, 37, 33, 29 | 18.12d |  | Logistics Manager | 8h |

| ID | WBS | Task | Duration | Start | Finish | Predecessors | Total slack | Free slack | Resources | Work |
| --- | --- | --- | --- | --- | --- | --- | --- | --- | --- | --- |
| 26 | 1.5 | **Event Strategy** | 29.5d | 2003-12-03 08:00 | 2004-01-13 12:00 |  | 0d |  |  | 619h |
| 27 | 1.5.1 | Create seminar concept | 1w | 2003-12-03 08:00 | 2003-12-09 17:00 | 3 | 0d |  | Project Manager | 40h |
| 28 | 1.5.2 | Identify subject matter expert and presenter | 2d | 2003-12-10 08:00 | 2003-12-11 17:00 | 27 | 0d |  | Subject Matter Expert; Project Manager | 32h |
| 29 | 1.5.3 | Create speakers bios | 1d | 2003-12-12 08:00 | 2003-12-12 17:00 | 28 | 0d |  | Copywriter; Subject Matter Expert; Project Manager | 24h |
| 30 | 1.5.4 | Schedule strategy kickoff meeting | 1h | 2003-12-15 08:00 | 2003-12-15 09:00 | 29 | 0d |  | Logistics Manager | 1h |
| 31 | 1.5.5 | Hold strategy kickoff meeting with all necessary resources | 3h | 2003-12-22 09:00 | 2003-12-22 12:00 | 30FS+1w | 0d |  | Graphic Designer; Copywriter; Telemarketing; Logistics Manager; Project Manager | 15h |
| 32 | 1.5.6 | Create seminar message and invitation | 1w | 2003-12-22 13:00 | 2003-12-29 12:00 | 31 | 0d |  | Graphic Designer; Copywriter; Subject Matter Expert; Project Manager | 160h |
| 33 | 1.5.7 | Create call to action | 1d | 2003-12-29 13:00 | 2003-12-30 12:00 | 32 | 24d | 0d | Graphic Designer; Copywriter; Branch Manager; Subject Matter Expert; Project Manager | 40h |
| 34 | 1.5.8 | Create program guide copy | 1d | 2003-12-30 13:00 | 2003-12-31 12:00 | 33 | 24.62d | 0d | Copywriter; Subject Matter Expert | 16h |
| 35 | 1.5.9 | Create program guide graphics and company logo | 0.5d | 2003-12-31 13:00 | 2003-12-31 17:00 | 34 | 24.62d | 0d | Graphic Designer | 4h |
| 36 | 1.5.10 | Create seminar evaluation form | 1d | 2004-01-01 08:00 | 2004-01-01 17:00 | 35 | 24.62d | 6.5d | Subject Matter Expert; Project Manager | 16h |
| 37 | 1.5.11 | Create presentation and demo content | 2w | 2003-12-29 13:00 | 2004-01-12 12:00 | 32 | 6.12d | 0d | Subject Matter Expert | 80h |
| 38 | 1.5.12 | Run through presentation | 1d | 2004-01-12 13:00 | 2004-01-13 12:00 | 37 | 19.12d |  | Project Manager; Subject Matter Expert; Event Sponsor | 24h |
| 39 | 1.5.13 | Schedule presentation rehearsals | 1h | 2004-01-12 13:00 | 2004-01-12 14:00 | 37 | 20d |  | Logistics Manager | 1h |
| 40 | 1.5.14 | Create telemarketing script for pre-event calls | 1w | 2003-12-29 13:00 | 2004-01-05 12:00 | 32 | 0d |  | Telemarketing; Project Manager | 80h |
| 41 | 1.5.15 | Train telemarketing team for pre-event calls | 1h | 2004-01-05 13:00 | 2004-01-05 14:00 | 40 | 0d |  | Telemarketing; Project Manager; Sales Team | 3h |
| 42 | 1.5.16 | Create telemarketing script for post-event calls | 1w | 2003-12-30 13:00 | 2004-01-06 12:00 | 33 | 24d | 0d | Telemarketing; Project Manager | 80h |
| 43 | 1.5.17 | Train telemarketing team for post-event calls | 1h | 2004-01-06 13:00 | 2004-01-06 14:00 | 42 | 24d |  | Telemarketing; Project Manager; Sales Team | 3h |
| 44 | 1.6 | **Pre-Event Prospecting** | 43.62d | 2003-12-10 08:00 | 2004-02-09 14:00 |  | 0d |  |  | 452h |
| 45 | 1.6.1 | Research prospects to target | 1w | 2003-12-10 08:00 | 2003-12-16 17:00 | 27 | 13.5d | 0d | Project Manager | 40h |
| 46 | 1.6.2 | Notify sales team of event and gather customer names to invite | 1h | 2003-12-29 13:00 | 2003-12-29 14:00 | 32 | 29.25d | 0d | Project Manager | 1h |
| 47 | 1.6.3 | Send out calendar invite to sales regarding event | 1h | 2003-12-29 14:00 | 2003-12-29 15:00 | 46 | 29.25d | 0d | Logistics Manager | 1h |
| 48 | 1.6.4 | Send out e-mail invitation to company accounts | 4h | 2003-12-29 15:00 | 2003-12-30 10:00 | 47 | 29.25d | 0d | Logistics Manager; Project Manager | 8h |
| 49 | 1.6.5 | Create tracking tool containing all invited prospects | 1h | 2003-12-30 10:00 | 2003-12-30 11:00 | 45, 48 | 29.25d |  | Project Manager | 1h |
| 50 | 1.6.6 | Distribute prospects for e-mail and telemarketing | 1h | 2003-12-17 08:00 | 2003-12-17 09:00 | 45 | 13.5d |  | Project Manager | 1h |
| 51 | 1.6.7 | Invite prospects to the event via telemarketing | 5w | 2004-01-05 14:00 | 2004-02-09 14:00 | 41, 50 | 0d |  | Telemarketing; Sales Team | 400h |

| ID | WBS | Task | Duration | Start | Finish | Predecessors | Total slack | Free slack | Resources | Work |
| --- | --- | --- | --- | --- | --- | --- | --- | --- | --- | --- |
| 52 | 1.7 | **Event Execution** | 5d? | 2004-01-08 13:00 | 2004-01-15 12:00 |  | 6.12d | 0d |  | 144h |
| 53 | 1.7.1 | Call registered attendees | 2d | 2004-01-08 13:00 | 2004-01-12 12:00 | 56SS-2d | 9.12d |  | Telemarketing; Sales Team | 32h |
| 54 | 1.7.2 | Set up room | 4h | 2004-01-08 13:00 | 2004-01-08 17:00 | 56SS-2d | 10.62d |  | Logistics Manager | 4h |
| 55 | 1.7.3 | Rehearse | 4h | 2004-01-08 13:00 | 2004-01-08 17:00 | 56SS-2d | 10.62d |  | Project Manager; Subject Matter Expert; Event Sponsor | 12h |
| 56 | 1.7.4 | Execute event | 3d? | 2004-01-12 13:00 | 2004-01-15 12:00 | 2, 37 | 6.12d | 0d | Project Manager; Subject Matter Expert; Sales Team; Event Sponsor | 96h |
| 57 | 1.8 | **Post-Event Follow Up** | 11d | 2004-01-15 13:00 | 2004-01-30 12:00 |  | 6.12d |  |  | 176h |
| 58 | 1.8.1 | Research and qualify prospects generated | 0.5d | 2004-01-15 13:00 | 2004-01-15 17:00 | 52 | 6.12d | 0d | Project Manager | 4h |
| 59 | 1.8.2 | Distribute qualified prospects for follow-up | 4h | 2004-01-16 08:00 | 2004-01-16 12:00 | 58 | 6.12d | 0d | Project Manager | 4h |
| 60 | 1.8.3 | Enter prospects into sales database with appropriate prospect source | 1d | 2004-01-16 13:00 | 2004-01-19 12:00 | 59 | 15.12d |  | Logistics Manager | 8h |
| 61 | 1.8.4 | Follow-up calls to attendees | 2w | 2004-01-16 13:00 | 2004-01-30 12:00 | 59 | 6.12d |  | Sales Team; Telemarketing | 160h |
